How a schedule from MS Project changed from version to version. A marks actual dates.

## Version 1 (saved 2016-12-05)

Note of the change: mistareas_informes

| ID | WBS | Task | Duration | Start | Finish | Predecessors | Total float | Constraint |
| --- | --- | --- | --- | --- | --- | --- | --- | --- |
| 2 | 1 | **HITO 0** | 1d? | 2016-10-14 | 2016-10-14 |  | 49.88d |  |
| 3 | 1.1 | **PM** | 1d? | 2016-10-14 | 2016-10-14 |  | 49.88d |  |
| 4 |  | Rellenar documento de Concepto del proyecto | 1d? | 2016-10-14 | 2016-10-14 |  | 49.88d |  |
| 5 |  | Rellenar versión inicial del documento Especificación | 1d? | 2016-10-14 | 2016-10-14 |  | 49.88d |  |
| 6 |  | Completar y revisar documento Especificación. | 1d? | 2016-10-14 | 2016-10-14 |  | 49.88d |  |
| 7 |  | Elaborar el Presupuesto (hoja de cálculo) | 1d? | 2016-10-14 | 2016-10-14 |  | 49.88d |  |
| 8 |  | Crear WBS del proyecto en Project. | 1d? | 2016-10-14 | 2016-10-14 |  | 49.88d |  |
| 9 |  | Crear plan general (Tareas y precedencias básicas). en Project | 1d? | 2016-10-14 | 2016-10-14 |  | 49.88d |  |
| 10 |  | *Entrega (Documento Especificacion, Presupuesto, WBS) | 0d | 2016-10-14 | 2016-10-14 |  | 50.88d |  |
| 11 | 1.2 | **NM** | 1d? | 2016-10-14 | 2016-10-14 |  | 49.88d |  |
| 12 |  | Diseño funcional y visualización del proyecto: documentación con la especificación de todas las funcionalidades del sistema | 1d? | 2016-10-14 | 2016-10-14 |  | 49.88d |  |
| 13 |  | Especificación y visualización de elementos y tecnologías a utilizar, por ejemplo mediante la definición de una infografía del proyecto | 1d? | 2016-10-14 | 2016-10-14 |  | 49.88d |  |
| 15 | 2 | **HITO 1** | 50.88d? | 2016-10-14 | 2016-12-23 |  | 0d |  |
| 16 | 2.1 | **Iteración 1 (2 nov)** | 13d? | 2016-10-14 | 2016-11-02 |  | 34.12d |  |
| 17 |  | [PM] Registrar de tiempos y % de realización de tareas en Project | 12d | 2016-10-14 | 2016-10-31 |  | 38.88d |  |
| 18 |  | [PM] Detallar plan iteraciones del mes de Noviembre. Creación Subtareas y precedencias en Project | 23h | 2016-10-14 | 2016-10-18 |  | 34.12d |  |
| 19 |  | [PM] Detallar plan iteraciones del mes de Noviembre. Asignar recursos a las tareas en Project. | 23h | 2016-10-18 | 2016-10-21 | 18 | 34.12d |  |
| 20 |  | [PD] Hacer cartel del juego | 10h | 2016-10-14 | 2016-10-17 |  | 47d |  |
| 21 |  | [V1] Entregar documento de diseño de mecánicas de los NPCs | 20h | 2016-10-14 | 2016-10-18 |  | 45.75d |  |
| 22 |  | [V1] Entregar documento de diseño de sistemas de toma de decisión | 22h | 2016-10-14 | 2016-10-18 |  | 45.5d |  |
| 23 | 2.1.7 | **[V2] Diseñar e implementar la arquitectura basada en componentes (diagrama de clases e implementación)** | 1d? | 2016-10-14 | 2016-10-14 |  | 47.25d |  |
| 24 |  | Instalación Irrlicht | 1d? | 2016-10-14 | 2016-10-14 |  | 47.25d |  |
| 25 |  | Aprendizaje Xcode | 1d? | 2016-10-14 | 2016-10-14 |  | 47.25d |  |
| 26 |  | Instalación Box2D | 1d? | 2016-10-14 | 2016-10-14 |  | 47.25d |  |
| 27 |  | Diseño inicial del diagrama de componentes | 1d? | 2016-10-14 | 2016-10-14 |  | 47.25d |  |
| 28 |  | Compilación multiplataforma | 1d? | 2016-10-14 | 2016-10-14 |  | 47.25d |  |
| 29 |  | [PM] Comparar la planificación prevista y real en Project hito 1. | 21h | 2016-10-21 | 2016-10-26 | 20, 21, 22, 23, 18, 19 | 42.5d |  |
| 30 |  | [PM] Confeccionar Informes de iteración e informe resumen de Hito 1 | 1d? | 2016-10-14 | 2016-10-14 |  | 49.88d |  |
| 31 |  | Entregables Iteración 1 | 0d | 2016-11-02 | 2016-11-02 |  | 26.88d | start no earlier than 2016-11-02 |
| 32 | 2.2 | **Iteración 2 (16 nov)** | 11d? | 2016-11-02 | 2016-11-16 | 31 | 26.88d |  |
| 33 |  | [PM] Registrar de tiempos y % de realización de tareas en Project | 11d | 2016-11-02 | 2016-11-16 | 18, 19 | 26.88d |  |
| 34 |  | [PM] Detallar plan iteraciones del mes de Diciembre. Creación Subtareas y precedencias en Project | 23h | 2016-11-02 | 2016-11-04 | 18, 19 | 35d |  |
| 35 |  | [PM] Detallar plan iteraciones del mes de Diciembre. Asignar recursos a las tareas en Project. | 23h | 2016-11-02 | 2016-11-04 | 18, 19 | 35d |  |
| 36 |  | [PM] Rellenar documento Gestión de riesgos | 23h | 2016-11-02 | 2016-11-04 | 18, 19 | 35d |  |
| 37 |  | [V1] Entregar documento de diseño técnico de la arquitectura de la IA | 20h | 2016-11-02 | 2016-11-04 | 18, 19 | 30.75d |  |
| 38 | 2.2.6 | **[V1] Gestión de estados de la IA con Máquinas de Estados** | 2.12d | 2016-11-04 | 2016-11-08 | 37 | 30.75d |  |
| 39 |  | Implementar tabla de los distintos estados | 17h | 2016-11-04 | 2016-11-08 |  | 30.75d |  |
| 40 |  | Describir los estados | 5h | 2016-11-04 | 2016-11-07 |  | 32.25d |  |
| 41 | 2.2.7 | **[V1] Sistema de toma de decisión con Árboles de Decisión** | 2.5d | 2016-11-08 | 2016-11-11 | 38 | 30.75d |  |
| 42 |  | Dibujar árboles de decisión | 20h | 2016-11-08 | 2016-11-11 |  | 30.75d |  |
| 43 |  | Documento de sistemas máquina de estados/árbol de decisión | 12h | 2016-11-08 | 2016-11-10 |  | 31.75d |  |
| 44 | 2.2.8 | **[V2] Control del player por motor de físicas 2D, dynamic o kinematic** | 1.25d | 2016-11-02 | 2016-11-03 | 18, 19 | 36.12d |  |
| 45 |  | Detectar input de teclado mediante Irrlich | 2h | 2016-11-02 | 2016-11-02 |  | 37.12d |  |
| 46 |  | Creación de mundo físico | 6h | 2016-11-02 | 2016-11-02 |  | 36.62d |  |
| 47 |  | Aplicar movimiento al objeto físico según el input | 1h | 2016-11-02 | 2016-11-02 |  | 37.25d |  |
| 48 |  | Instalación de SFML | 2h | 2016-11-02 | 2016-11-02 |  | 37.12d |  |
| 49 |  | Detectar input del Joystick | 1h | 2016-11-02 | 2016-11-02 |  | 37.25d |  |
| 50 |  | Aplicar movimiento al objeto físico según el input | 5h | 2016-11-02 | 2016-11-02 |  | 36.75d |  |
| 51 |  | Aplicar rotación al objeto físico según el input del Joystick | 8h | 2016-11-02 | 2016-11-02 |  | 36.38d |  |
| 52 |  | Aplicar rotación al objeto físico según la posición del ratón | 10h | 2016-11-02 | 2016-11-03 |  | 36.12d |  |
| 53 | 2.2.9 | **[V2] Sistema de depuración visual de las físicas** | 0.5d | 2016-11-03 | 2016-11-03 | 44 | 36.12d |  |
| 54 |  | Creación y carga de modelo wireframe 3D en Blender | 1h | 2016-11-03 | 2016-11-03 |  | 36.5d |  |
| 55 |  | Detección de las colisiones | 4h | 2016-11-03 | 2016-11-03 |  | 36.12d |  |
| 56 | 2.2.10 | **[V2] Creación de un cargador de niveles** | 1.88d | 2016-11-02 | 2016-11-03 | 18, 19 | 34.12d |  |
| 57 |  | Cargar tmx con capas de objetos | 15h | 2016-11-02 | 2016-11-03 |  | 34.12d |  |
| 58 |  | Cargar objetos en 3D | 10h | 2016-11-02 | 2016-11-03 |  | 34.75d |  |
| 59 |  | [V2] Formato propio para la definición de los niveles (documento con la especificación del formato) | 15h | 2016-11-03 | 2016-11-07 | 56 | 34.12d |  |
| 60 |  | [PM] Comparar la planificación prevista y real en Project hito 1. | 6h | 2016-11-16 | 2016-11-16 |  | 27.12d | start no earlier than 2016-11-16 |
| 61 |  | [PM] Confeccionar Informes de iteración e informe resumen de Hito 1 | 1d? | 2016-11-16 | 2016-11-16 |  | 26.88d | finish no earlier than 2016-11-16 |
| 62 |  | Entregables iteración 2 | 0d | 2016-11-16 | 2016-11-16 |  | 18.62d | finish no earlier than 2016-11-16 |
| 63 | 2.3 | **Iteración 3 (30 nov)** | 9d? | 2016-11-17 | 2016-11-30 | 62 | 17.88d |  |
| 64 |  | [PM] Preparar exposición | 2h | 2016-11-17 | 2016-11-17 |  | 26.62d |  |
| 65 |  | [PM] Registrar de tiempos y % de realización de tareas en Project | 21h | 2016-11-17 | 2016-11-21 |  | 24.25d |  |
| 66 |  | [PM] Aplicar el modelo EVA en Project | 21h | 2016-11-17 | 2016-11-21 |  | 24.25d |  |
| 67 |  | [PD] Hacer video con animación del logo de la empresa | 15h | 2016-11-17 | 2016-11-18 |  | 25d |  |
| 68 |  | [V1] Sistema de toma de decisión con Behaviour Trees | 51h | 2016-11-17 | 2016-11-25 |  | 18.62d |  |
| 69 |  | [V2] Implementación de cámara de seguimiento | 20h | 2016-11-17 | 2016-11-21 |  | 19.38d |  |
| 70 |  | [V2] Implementación de cámara inteligente que ajuste ángulo y zoom | 25h | 2016-11-21 | 2016-11-24 | 69 | 19.38d |  |
| 71 |  | [V2] Gestión de colisiones de la cámara (sistema de depuración para ver colisiones) | 15h | 2016-11-25 | 2016-11-29 | 70, 68 | 18.62d |  |
| 72 |  | [V2] Usar trazado de rayos y otros tests de las físicas | 20h | 2016-11-17 | 2016-11-21 |  | 24.38d |  |

| ID | WBS | Task | Duration | Start | Finish | Predecessors | Total float | Constraint |
| --- | --- | --- | --- | --- | --- | --- | --- | --- |
| 73 |  | [TAG] Crear visualizador OpenGL 4.X simple, con datos por programa. Shader básico. | 6h | 2016-11-17 | 2016-11-17 |  | 26.12d |  |
| 74 |  | [PM] Comparar la planificación prevista y real en Project hito 1. | 21h | 2016-11-17 | 2016-11-21 |  | 24.25d |  |
| 75 |  | [PM] Confeccionar Informes de iteración e informe resumen de Hito 1 | 1d? | 2016-11-17 | 2016-11-17 |  | 25.88d |  |
| 76 |  | Entregables iteración 3 | 0d | 2016-11-30 | 2016-11-30 |  | 10d | start no earlier than 2016-11-30 |
| 77 | 2.4 | **Iteración 4 (14 dic)** | 10d? | 2016-11-30 | 2016-12-14 | 76 | 7.88d |  |
| 78 |  | [PM] Registrar de tiempos y % de realización de tareas en Project | 21h | 2016-11-30 | 2016-12-02 |  | 15.25d |  |
| 79 |  | [NM] Definición de métricas e indicadores del proyecto. En el contexto indicado se definen los indicadores principales del proyecto | 10h | 2016-11-30 | 2016-12-01 |  | 16.62d |  |
| 80 |  | [V1] Sistema de percepción sensorial (vista, oído, olfato, canales…) | 28h | 2016-11-30 | 2016-12-05 |  | 14.38d |  |
| 81 |  | [V2] Mecánicas básicas entidades sin IA | 25h | 2016-11-30 | 2016-12-05 |  | 10.38d |  |
| 82 |  | [V2] Mecánicas de acción | 35h | 2016-12-05 | 2016-12-09 | 81 | 10.38d |  |
| 83 |  | [V2] Mecánicas de puzzle | 25h | 2016-12-08 | 2016-12-13 |  | 8.75d | start no earlier than 2016-12-08 |
| 84 |  | [TAG] Crear visualizador OpenGL 4.X simple, con datos por fichero. Shader básico. | 5h | 2016-11-30 | 2016-11-30 |  | 17.25d |  |
| 85 |  | [PM] Comparar la planificación prevista y real en Project hito 1. | 21h | 2016-11-30 | 2016-12-02 |  | 15.25d |  |
| 86 |  | [PM] Confeccionar Informes de iteración e informe resumen de Hito 1 | 1d? | 2016-11-30 | 2016-11-30 |  | 16.88d |  |
| 87 |  | Entregables iteración 4 | 0d | 2016-12-14 | 2016-12-14 |  | 0d | start no earlier than 2016-12-14 |
| 88 | 2.5 | **Iteración 5 (23 dic)** | 7.88d | 2016-12-14 | 2016-12-23 | 87 | 0d |  |
| 89 |  | [PM] Elaborar la presentación del Hito 1 | 14h | 2016-12-14 | 2016-12-15 |  | 4.38d |  |
| 90 |  | [PM] Exponer la presentación del Hito 1 | 14h | 2016-12-15 | 2016-12-19 | 89 | 4.38d |  |
| 91 |  | [PM] Registrar de tiempos y % de realización de tareas en Project | 21h | 2016-12-14 | 2016-12-16 |  | 0d |  |
| 92 |  | [PM] Comparar la planificación prevista y real en Project hito 1. | 21h | 2016-12-16 | 2016-12-21 | 91 | 0d |  |
| 93 |  | [PM] Confeccionar Informes de iteración e informe resumen de Hito 1 | 21h | 2016-12-21 | 2016-12-23 | 92 | 0d |  |
| 95 | 3 | **HITO 2** | 1d? | 2016-10-14 | 2016-10-14 |  | 49.88d |  |
| 96 | 3.1 | **PM** | 1d? | 2016-10-14 | 2016-10-14 |  | 49.88d |  |
| 97 |  | Revisar especificación proyecto. | 1d? | 2016-10-14 | 2016-10-14 |  | 49.88d |  |
| 98 |  | Detallar plan iteraciones del mes de Enero. Creación Subtareas y precedencias en Project | 1d? | 2016-10-14 | 2016-10-14 |  | 49.88d |  |
| 99 |  | Detallar plan iteraciones del mes de Enero. Asignar recursos a las tareas en Project. | 1d? | 2016-10-14 | 2016-10-14 |  | 49.88d |  |
| 100 |  | Reestimar proyecto. | 1d? | 2016-10-14 | 2016-10-14 |  | 49.88d |  |
| 101 |  | Comparar la planificación prevista y real en Project hito 2. | 1d? | 2016-10-14 | 2016-10-14 |  | 49.88d |  |
| 102 |  | Registrar de tiempos y % de realización de tareas en Project | 1d? | 2016-10-14 | 2016-10-14 |  | 49.88d |  |
| 103 |  | Confeccionar Informes de iteración e informe resumen de Hito 2 | 1d? | 2016-10-14 | 2016-10-14 |  | 49.88d |  |
| 104 | 3.2 | **TAG** | 1d? | 2016-10-14 | 2016-10-14 |  | 49.88d |  |
| 105 |  | Gestor de recursos: Parser de objetos en multiples formatos, salida en modo texto | 1d? | 2016-10-14 | 2016-10-14 |  | 49.88d |  |
| 106 | 3.3 | **V1** | 1d? | 2016-10-14 | 2016-10-14 |  | 49.88d |  |
| 107 |  | Sistema de búsqueda de caminos y control (Pathplanning/following) | 1d? | 2016-10-14 | 2016-10-14 |  | 49.88d |  |
| 108 |  | Comunicación simulada básica entre NPCs (Blackboard) | 1d? | 2016-10-14 | 2016-10-14 |  | 49.88d |  |
| 109 |  | Sistema de memoria de estado y reacción para NPCs | 1d? | 2016-10-14 | 2016-10-14 |  | 49.88d |  |
| 110 | 3.4 | **V2** | 1d? | 2016-10-14 | 2016-10-14 |  | 49.88d |  |
| 111 |  | Integración de librería para GUI | 1d? | 2016-10-14 | 2016-10-14 |  | 49.88d |  |
| 112 |  | Power-ups y elementos adicionales | 1d? | 2016-10-14 | 2016-10-14 |  | 49.88d |  |
| 113 | 3.5 | **PD** | 1d? | 2016-10-14 | 2016-10-14 |  | 49.88d |  |
| 114 |  | Creación de los menús / HUD | 1d? | 2016-10-14 | 2016-10-14 |  | 49.88d |  |
| 115 | 3.6 | **NM** | 1d? | 2016-10-14 | 2016-10-14 |  | 49.88d |  |
| 116 |  | Incorporación de open data, API's, y otras fuentes heterogéneas | 1d? | 2016-10-14 | 2016-10-14 |  | 49.88d |  |
| 118 | 4 | **HITO 3** | 1d? | 2016-10-14 | 2016-10-14 |  | 49.88d |  |
| 119 | 4.1 | **PM** | 1d? | 2016-10-14 | 2016-10-14 |  | 49.88d |  |
| 120 |  | Detallar plan iteraciones del mes de Febrero-Marzo. Creación Subtareas y precedencias en Project | 1d? | 2016-10-14 | 2016-10-14 |  | 49.88d |  |
| 121 |  | Detallar plan iteraciones del mes de Febrero-Marzo Asignar recursos a las tareas en Project. | 1d? | 2016-10-14 | 2016-10-14 |  | 49.88d |  |
| 122 |  | Registrar de tiempos y % de realización de tareas en Project | 1d? | 2016-10-14 | 2016-10-14 |  | 49.88d |  |
| 123 |  | Comparar la planificación prevista y real en Project hito 3. | 1d? | 2016-10-14 | 2016-10-14 |  | 49.88d |  |
| 124 |  | Confeccionar Informes de iteración e informe resumen de Hito 3 | 1d? | 2016-10-14 | 2016-10-14 |  | 49.88d |  |
| 125 |  | Elaborar la presentación del Hito 3 | 1d? | 2016-10-14 | 2016-10-14 |  | 49.88d |  |
| 126 |  | Exponer la presentación del Hito 3 | 1d? | 2016-10-14 | 2016-10-14 |  | 49.88d |  |
| 127 | 4.2 | **TAG** | 1d? | 2016-10-14 | 2016-10-14 |  | 49.88d |  |
| 128 |  | Arbol de la escena: Tipos de datos para nodos (completo) y entidades (sólo clase padre; clases hijas sin contenido), construcción del árbol, recorrido del árbol, salida en modo texto | 1d? | 2016-10-14 | 2016-10-14 |  | 49.88d |  |
| 129 |  | Arbol de la escena: Tipos de datos para entidades de tipo transformacion (traslación, rotación y escalado relativos y absolutos. Otras transformaciones). Salida en modo texto | 1d? | 2016-10-14 | 2016-10-14 |  | 49.88d |  |
| 130 |  | Arbol de la escena: Tipos de datos para entidades de tipo cámara y luz (cámaras y luces de dos tipos). Salida en modo texto | 1d? | 2016-10-14 | 2016-10-14 |  | 49.88d |  |
| 131 |  | Arbol de la escena: Tipos de datos para entidades de tipo malla. Salida en modo texto | 1d? | 2016-10-14 | 2016-10-14 |  | 49.88d |  |
| 132 |  | Arbol de la escena: Tipos de datos para entidades de tipo animación (cuadro a cuadro). Salida en modo texto | 1d? | 2016-10-14 | 2016-10-14 |  | 49.88d |  |
| 133 |  | Gestor de recursos: Carga de modelos en formato múltiple en las entidades de tipo malla. Carga de varios ficheros para animación. Salida en modo texto | 1d? | 2016-10-14 | 2016-10-14 |  | 49.88d |  |
| 134 |  | Visualización: visualizador OpenGL 4.X de las entidades tipo malla. Shader básico. Integración con el motor. Sin materiales, texturas, cámara ni luces | 1d? | 2016-10-14 | 2016-10-14 |  | 49.88d |  |
| 135 |  | Visualización: visualizador OpenGL 4.X de las entidades tipo malla. Shader básico. Con cámaras y luces de varios tipos. Visualización con registro de cámaras y luces. | 1d? | 2016-10-14 | 2016-10-14 |  | 49.88d |  |
| 136 |  | Gestor de recursos: Carga de materiales y texturas. Salida en modo texto | 1d? | 2016-10-14 | 2016-10-14 |  | 49.88d |  |
| 137 |  | Visualización: visualizador OpenGL 4.X de las entidades tipo malla. Shader básico. Añadiendo materiales y texturas. | 1d? | 2016-10-14 | 2016-10-14 |  | 49.88d |  |
| 138 |  | Fachada: creación de una fachada entre el motor y la aplicación. | 1d? | 2016-10-14 | 2016-10-14 |  | 49.88d |  |
| 139 |  | Visualización: visualizador OpenGL 4.X con cuatro shaders avanzados | 1d? | 2016-10-14 | 2016-10-14 |  | 49.88d |  |
| 140 |  | IGC: Aplicación: cargador de modelos, movimiento del modelo, de las luces y de la cámara. Cambio de modelo, materiales y texturas. Animaciones. Integración con el motor; ICED: Integración con el videojuego, sustitución de Irrlicht por el motor propio | 1d? | 2016-10-14 | 2016-10-14 |  | 49.88d |  |
| 141 |  | Optimizaciones del motor (4 técnicas) | 1d? | 2016-10-14 | 2016-10-14 |  | 49.88d |  |
| 142 | 4.3 | **V1** | 1d? | 2016-10-14 | 2016-10-14 |  | 49.88d |  |
| 143 |  | Sistema de Waypoints para pathfinding continuo | 1d? | 2016-10-14 | 2016-10-14 |  | 49.88d |  |
| 144 |  | Sistema de depuración visual in-game de la IA | 1d? | 2016-10-14 | 2016-10-14 |  | 49.88d |  |

| ID | WBS | Task | Duration | Start | Finish | Total float |
| --- | --- | --- | --- | --- | --- | --- |
| 145 |  | Gestión de recursos de IA con Level-of-Detail (LoD) | 1d? | 2016-10-14 | 2016-10-14 | 49.88d |
| 146 | 4.4 | **V2** | 1d? | 2016-10-14 | 2016-10-14 | 49.88d |
| 147 |  | Diseño y creación de niveles | 1d? | 2016-10-14 | 2016-10-14 | 49.88d |
| 148 |  | Implementación de menús | 1d? | 2016-10-14 | 2016-10-14 | 49.88d |
| 149 |  | Implementación del HUD | 1d? | 2016-10-14 | 2016-10-14 | 49.88d |
| 150 |  | Implementación de clipping (comparativa de FPS con/sin oclusiones) | 1d? | 2016-10-14 | 2016-10-14 | 49.88d |
| 151 |  | Sistema de Level-Of-Detail (LoD) para la selección de la malla gráfica de los objetos | 1d? | 2016-10-14 | 2016-10-14 | 49.88d |
| 152 | 4.5 | **PD** | 1d? | 2016-10-14 | 2016-10-14 | 49.88d |
| 153 |  | Trailer juego/proyecto | 1d? | 2016-10-14 | 2016-10-14 | 49.88d |
| 154 |  | Vídeo final juego / explicación parte del proyecto | 1d? | 2016-10-14 | 2016-10-14 | 49.88d |
| 155 | 5 | **HITO 4** | 1d? | 2016-10-14 | 2016-10-14 | 49.88d |
| 156 | 5.1 | **PM** | 1d? | 2016-10-14 | 2016-10-14 | 49.88d |
| 157 |  | Detallar plan iteraciones del mes de Abril-Mayo. Creación Subtareas y precedencias en Project | 1d? | 2016-10-14 | 2016-10-14 | 49.88d |
| 158 |  | Detallar plan iteraciones del mes de Abril-Mayo. Asignar recursos a las tareas en Project. | 1d? | 2016-10-14 | 2016-10-14 | 49.88d |
| 159 |  | Registrar de tiempos y % de realización de tareas en Project | 1d? | 2016-10-14 | 2016-10-14 | 49.88d |
| 160 |  | Comparar la planificación prevista y real en Project hito 4. | 1d? | 2016-10-14 | 2016-10-14 | 49.88d |
| 161 |  | Confeccionar Informes de iteración e informe resumen de Hito 4. | 1d? | 2016-10-14 | 2016-10-14 | 49.88d |
| 162 |  | Elaborar la presentación del Hito 4 | 1d? | 2016-10-14 | 2016-10-14 | 49.88d |
| 163 |  | Exponer la presentación del Hito 4 | 1d? | 2016-10-14 | 2016-10-14 | 49.88d |
| 164 | 5.2 | **TAG** | 1d? | 2016-10-14 | 2016-10-14 | 49.88d |
| 165 |  | Efectos visuales (3 efectos) | 1d? | 2016-10-14 | 2016-10-14 | 49.88d |
| 166 |  | Extras (a determinar por el grupo) | 1d? | 2016-10-14 | 2016-10-14 | 49.88d |
| 167 | 5.3 | **V2** | 1d? | 2016-10-14 | 2016-10-14 | 49.88d |
| 168 |  | Implementación de cesped y vegetación | 1d? | 2016-10-14 | 2016-10-14 | 49.88d |
| 169 |  | Implementación de sistemas de partículas | 1d? | 2016-10-14 | 2016-10-14 | 49.88d |
| 170 | 5.4 | **PD** | 1d? | 2016-10-14 | 2016-10-14 | 49.88d |
| 171 |  | Making of juego/proyecto | 1d? | 2016-10-14 | 2016-10-14 | 49.88d |
| 172 |  | Crear créditos | 1d? | 2016-10-14 | 2016-10-14 | 49.88d |

## Version 2 (saved 2017-01-29)

Note of the change: modificando project

Last finish stays 2016-12-23.

Added:

| ID | Task | Duration | Start | Finish |
| --- | --- | --- | --- | --- |
| 96 | **Iteración 1 (31 ene)** | 1d? | 2016-10-14 | 2016-10-14 |
| 97 | [PM] Detallar plan iteraciones del mes de Enero. Creación Subtareas y precedencias en Project | 1d? | 2016-10-14 | 2016-10-14 |
| 98 | [PM] Detallar plan iteraciones del mes de Enero. Asignar recursos a las tareas en Project. | 1d? | 2016-10-14 | 2016-10-14 |
| 99 | [PM] Comparar la planificación prevista y real en Project hito 2. | 1d? | 2016-10-14 | 2016-10-14 |
| 100 | [PM] Registrar de tiempos y % de realización de tareas en Project | 1d? | 2016-10-14 | 2016-10-14 |
| 101 | **Iteración 2 (7 ene)** | 1d? | 2016-10-14 | 2016-10-14 |
| 102 | [TAG] Gestor de recursos: Parser de objetos en multiples formatos, salida en modo texto | 1d? | 2016-10-14 | 2016-10-14 |
| 103 | **Iteración 3 (14 ene)** | 1d? | 2016-10-14 | 2016-10-14 |
| 104 | [V1] Comunicación simulada básica entre NPCs (Blackboard) | 1d? | 2016-10-14 | 2016-10-14 |
| 105 | [PD] Creación de los menús / HUD | 1d? | 2016-10-14 | 2016-10-14 |
| 106 | [V2] Integración de librería para GUI | 1d? | 2016-10-14 | 2016-10-14 |
| 107 | **Iteración 4 (21 ene)** | 1d? | 2016-10-14 | 2016-10-14 |
| 108 | [V2] Power-ups y elementos adicionales | 1d? | 2016-10-14 | 2016-10-14 |
| 109 | **Iteración 5 (30 ene)** | 1d? | 2016-10-14 | 2016-10-14 |
| 110 | [V1] Sistema de búsqueda de caminos y control (Pathplanning/following) | 1d? | 2016-10-14 | 2016-10-14 |
| 111 | [V1] Sistema de memoria de estado y reacción para NPCs | 1d? | 2016-10-14 | 2016-10-14 |
| 112 | [NM]Incorporación de open data, API's, y otras fuentes heterogéneas | 1d? | 2016-10-14 | 2016-10-14 |
| 113 | [PM] Confeccionar Informes de iteración e informe resumen de Hito 2 | 1d? | 2016-10-14 | 2016-10-14 |
| 114 | [PM] Reestimar proyecto. | 1d? | 2016-10-14 | 2016-10-14 |

Removed: 96 PM; 97 Revisar especificación proyecto.; 98 Detallar plan iteraciones del mes de Enero. Creación Subtareas y precedencias en Project; 99 Detallar plan iteraciones del mes de Enero. Asignar recursos a las tareas en Project.; 100 Reestimar proyecto.; 101 Comparar la planificación prevista y real en Project hito 2.; 102 Registrar de tiempos y % de realización de tareas en Project; 103 Confeccionar Informes de iteración e informe resumen de Hito 2; 104 TAG; 105 Gestor de recursos: Parser de objetos en multiples formatos, salida en modo texto; 106 V1; 107 Sistema de búsqueda de caminos y control (Pathplanning/following); 108 Comunicación simulada básica entre NPCs (Blackboard); 109 Sistema de memoria de estado y reacción para NPCs; 110 V2; 111 Integración de librería para GUI; 112 Power-ups y elementos adicionales; 113 PD; 114 Creación de los menús / HUD; 115 NM; 116 Incorporación de open data, API's, y otras fuentes heterogéneas

## Version 3 (saved 2017-01-29)

Note of the change: project e informes de iteración

Last finish stays 2016-12-23.

Changed:

| ID | Task | Other |
| --- | --- | --- |
| 96 | **Iteración 1 (31 dic)** | was named Iteración 1 (31 ene) |

## Version 4 (saved 2017-01-29)

Note of the change: tiempos y tareas

Last finish 2016-12-23 → 2017-01-23 (+31d).

Changed:

| ID | Task | Start | Finish | Duration | Total float | Predecessors | Other |
| --- | --- | --- | --- | --- | --- | --- | --- |
| 95 | **HITO 2** | 2016-10-14 → 2016-12-23 (+70d) | 2016-10-14 → 2017-01-23 (+101d) | 1d? → 21d | 49.88d → 0d | none → 15 |  |
| 96 | **Iteración 1 (31 dic)** | 2016-10-14 → 2016-12-23 (+70d) | 2016-10-14 → 2016-12-28 (+75d) | 1d? → 2.62d | 49.88d → 0d |  |  |
| 97 | [PM] Detallar plan iteraciones del mes de Enero. Creación Subtareas y precedencias en Project | 2016-10-14 → 2016-12-23 (+70d) | 2016-10-14 → 2016-12-26 (+73d) | 1d? → 3h | 49.88d → 2.25d |  | resources none → Stoycho [2%]; Sandra [2%]; Nerea [2%]; Gaspar [2%]; Julia [2%]; Catherine [2%] |
| 98 | [PM] Detallar plan iteraciones del mes de Enero. Asignar recursos a las tareas en Project. | 2016-10-14 → 2016-12-23 (+70d) | 2016-10-14 → 2016-12-26 (+73d) | 1d? → 3h | 49.88d → 2.25d |  | resources none → Catherine [5%]; Gaspar [5%]; Julia [5%]; Nerea [5%]; Sandra [5%]; Stoycho [5%] |
| 99 | [PM] Comparar la planificación prevista y real en Project hito 2. | 2016-10-14 → 2016-12-23 (+70d) | 2016-10-14 → 2016-12-28 (+75d) | 1d? → 21h | 49.88d → 0d |  | resources none → Catherine [1%]; Gaspar [1%]; Julia [1%]; Nerea [1%]; Sandra [1%]; Stoycho [1%] |
| 100 | [PM] Registrar de tiempos y % de realización de tareas en Project | 2016-10-14 → 2016-12-23 (+70d) | 2016-10-14 → 2016-12-27 (+74d) | 1d? → 1.33d | 49.88d → 1.29d |  | resources none → Sandra [90%] |
| 101 | **Iteración 2 (7 ene)** | 2016-10-14 → 2016-12-28 (+75d) | 2016-10-14 → 2016-12-30 (+77d) | 1d? → 1.88d | 49.88d → 0d | none → 96 |  |
| 102 | [TAG] Gestor de recursos: Parser de objetos en multiples formatos, salida en modo texto | 2016-10-14 → 2016-12-28 (+75d) | 2016-10-14 → 2016-12-30 (+77d) | 1d? → 15h | 49.88d → 0d |  | resources none → Stoycho |
| 103 | **Iteración 3 (14 ene)** | 2016-10-14 → 2016-12-30 (+77d) | 2016-10-14 → 2017-01-09 (+87d) | 1d? → 5.88d | 49.88d → 0d | none → 101 |  |
| 104 | [V1] Comunicación simulada básica entre NPCs (Blackboard) | 2016-10-14 → 2016-12-30 (+77d) | 2016-10-14 → 2017-01-09 (+87d) | 1d? → 47h | 49.88d → 0d |  | resources none → Gaspar; Julia |
| 105 | [PD] Creación de los menús / HUD | 2016-10-14 → 2016-12-30 (+77d) | 2016-10-14 → 2016-12-30 (+77d) | 1d? → 5h | 49.88d → 5.25d |  | resources none → Sandra |
| 106 | [V2] Integración de librería para GUI | 2016-10-14 → 2016-12-30 (+77d) | 2016-10-14 → 2016-12-30 (+77d) | 1d? → 5h | 49.88d → 5.25d |  | resources none → Nerea; Stoycho |
| 107 | **Iteración 4 (21 ene)** | 2016-10-14 → 2017-01-09 (+87d) | 2016-10-14 → 2017-01-13 (+91d) | 1d? → 4.38d | 49.88d → 0d | none → 103 |  |
| 108 | [V2] Power-ups y elementos adicionales | 2016-10-14 → 2017-01-09 (+87d) | 2016-10-14 → 2017-01-13 (+91d) | 1d? → 35h | 49.88d → 0d |  | resources none → Stoycho; Nerea |
| 109 | **Iteración 5 (24 ene)** | 2016-10-14 → 2017-01-13 (+91d) | 2016-10-14 → 2017-01-23 (+101d) | 1d? → 6.25d | 49.88d → 0d | none → 107 | was named Iteración 5 (30 ene) |
| 110 | [V1] Sistema de búsqueda de caminos y control (Pathplanning/following) | 2016-10-14 → 2017-01-13 (+91d) | 2016-10-14 → 2017-01-23 (+101d) | 1d? → 50h | 49.88d → 0d |  | resources none → Gaspar; Julia |
| 111 | [V1] Sistema de memoria de estado y reacción para NPCs | 2016-10-14 → 2017-01-13 (+91d) | 2016-10-14 → 2017-01-19 (+97d) | 1d? → 34h | 49.88d → 2d |  | resources none → Julia; Gaspar |
| 112 | [NM]Incorporación de open data, API's, y otras fuentes heterogéneas | 2016-10-14 → 2017-01-13 (+91d) | 2016-10-14 → 2017-01-23 (+101d) | 1d? → 50h | 49.88d → 0d |  | resources none → Julia; Nerea |
| 113 | [PM] Confeccionar Informes de iteración e informe resumen de Hito 2 | 2016-10-14 → 2017-01-13 (+91d) | 2016-10-14 → 2017-01-16 (+94d) | 1d? → 5h | 49.88d → 5.62d |  | resources none → Catherine [2%]; Gaspar [2%]; Julia [2%]; Nerea [2%]; Sandra [2%]; Stoycho [2%] |
| 114 | [PM] Reestimar proyecto. | 2016-10-14 → 2017-01-13 (+91d) | 2016-10-14 → 2017-01-19 (+97d) | 1d? → 29h | 49.88d → 2.62d |  | resources none → Sandra |

## Version 5 (saved 2017-01-29)

Last finish 2017-01-23 → 2017-02-06 (+14d).

Changed:

| ID | Task | Finish | Duration | Total float | Other |
| --- | --- | --- | --- | --- | --- |
| 95 | **HITO 2** | 2017-01-23 → 2017-02-06 (+14d) | 21d → 30.38d |  |  |
| 109 | **Iteración 5 (30 ene)** | 2017-01-23 → 2017-02-06 (+14d) | 6.25d → 15.62d |  | was named Iteración 5 (24 ene) |
| 110 | [V1] Sistema de búsqueda de caminos y control (Pathplanning/following) | 2017-01-23 → 2017-02-06 (+14d) | 50h → 125h |  | resources Gaspar; Julia → Gaspar [50%]; Julia [40%] |
| 111 | [V1] Sistema de memoria de estado y reacción para NPCs |  |  | 2d → 11.38d | resources Julia; Gaspar → Julia [50%]; Gaspar [50%] |
| 112 | [NM]Incorporación de open data, API's, y otras fuentes heterogéneas |  |  | 0d → 9.38d | resources Julia; Nerea → Julia [10%]; Nerea [10%] |
| 113 | [PM] Confeccionar Informes de iteración e informe resumen de Hito 2 |  |  | 5.62d → 15d | resources Catherine [2%]; Gaspar [2%]; Julia [2%]; Nerea [2%]; Sandra [2%]; Stoycho [2%] → Catherine; Gaspar; Julia; Nerea [2%]; Sandra [2%]; Stoycho |
| 114 | [PM] Reestimar proyecto. |  |  | 2.62d → 12d | resources Sandra → Sandra [98%] |

## Version 6 (saved 2017-02-07)

Note of the change: proyect actualizado h3

Last finish 2017-02-06 → 2017-03-01 (+23d).

Added:

| ID | Task | Duration | Start | Finish | Resources |
| --- | --- | --- | --- | --- | --- |
| 120 | [V1] Sistema de búsqueda de caminos y control | 3.33d? | 2017-02-06 | 2017-02-09 | Julia [30%]; Gaspar [30%] |
| 121 | [V1] Sistema de percepción sensorial | 3.33d? | 2017-02-06 | 2017-02-09 | Julia [30%]; Gaspar [30%] |
| 122 | [V2] Gestión de colisiones de la cámara | 5d? | 2017-02-06 | 2017-02-13 | Nerea [20%] |
| 123 | [V2] Mecánicas básicas entidades sin IA | 6.67d? | 2017-02-06 | 2017-02-14 | Nerea [15%]; Stoycho [15%] |
| 124 | [V2] Implementación del HUD | 3.33d? | 2017-02-06 | 2017-02-09 | Catherine [50%]; Nerea [30%] |
| 125 | [V2] Implementación de menús | 10d? | 2017-02-06 | 2017-02-20 | Catherine [50%]; Nerea [10%] |
| 126 | [V2] Mecánicas de puzzle | 6.67d? | 2017-02-06 | 2017-02-14 | Nerea [20%]; Stoycho [15%] |
| 127 | [V1] Sistema de gestión de eventos | 5d? | 2017-02-06 | 2017-02-13 | Gaspar [20%]; Julia [20%] |
| 128 | **[V1] Sistema de Waypoints para pathfinding continuo** | 1d? | 2017-02-06 | 2017-02-07 | Gaspar [20%]; Julia [20%] |
| 129 | Pathfinding basico | 1d? | 2017-02-06 | 2017-02-07 |  |
| 130 | Pathfinding con algoritmo especifico | 1d? | 2017-02-06 | 2017-02-07 |  |
| 131 | Pruebas en casos diversos | 1d? | 2017-02-06 | 2017-02-07 |  |
| 132 | Integración en el juego | 1d? | 2017-02-06 | 2017-02-07 |  |
| 133 | Pruebas de funcionamiento | 1d? | 2017-02-06 | 2017-02-07 |  |
| 134 | [TAG] Arbol de la escena: Tipos de datos para entidades de tipo transformacion (traslación, rotación y escalado relativos y absolutos. Otras transformaciones). Salida en modo texto | 0d? | 2016-10-14 | 2016-10-14 | Stoycho [35%] |
| 135 | [TAG] Arbol de la escena: Tipos de datos para nodos (completo) y entidades (sólo clase padre; clases hijas sin contenido), construcción del árbol, recorrido del árbol, salida en modo texto | 0d? | 2016-10-14 | 2016-10-14 | Stoycho [35%] |
| 137 | **[PD] Trailer juego** | 1d? | 2017-02-20 | 2017-02-21 | Julia; Sandra |
| 138 | Ideas y bocetos | 1d? | 2017-02-20 | 2017-02-21 |  |
| 145 | [RV] Texturizar personajes | 1d? | 2017-02-24 | 2017-02-27 |  |
| 146 | [RV] Rigging de los personajes | 1d? | 2017-02-24 | 2017-02-27 |  |
| 147 | [RV] Modelado del entorno y elementos | 1d? | 2017-02-24 | 2017-02-27 |  |
| 148 | [RV] Texturizado del entorno y elementos | 1d? | 2017-02-24 | 2017-02-27 |  |
| 149 | [RV] Captura de movimiento | 1d? | 2017-02-24 | 2017-02-27 |  |
| 150 | [RV] Modelado de los personajes | 1d? | 2017-02-24 | 2017-02-27 |  |
| 151 | [TAG] Visualización: visualizador OpenGL 4.X de las entidades tipo malla. Shader básico. Integración con el motor. Sin materiales, texturas, cámara ni luces | 1d? | 2017-02-24 | 2017-02-27 |  |
| 152 | [TAG] Visualización: visualizador OpenGL 4.X de las entidades tipo malla. Shader básico. Con cámaras y luces de varios tipos. Visualización con registro de cámaras y luces. | 1d? | 2017-02-24 | 2017-02-27 |  |
| 153 | [TAG] Gestor de recursos: Carga de materiales y texturas. Salida en modo texto | 1d? | 2017-02-24 | 2017-02-27 |  |
| 154 | [TAG] Visualización: visualizador OpenGL 4.X de las entidades tipo malla. Shader básico. Añadiendo materiales y texturas. | 1d? | 2017-02-24 | 2017-02-27 |  |
| 155 | [TAG] Fachada: creación de una fachada entre el motor y la aplicación. | 1d? | 2017-02-24 | 2017-02-27 |  |
| 156 | [TAG] Visualización: visualizador OpenGL 4.X con cuatro shaders avanzados | 1d? | 2017-02-24 | 2017-02-27 |  |
| 157 | [TAG] Aplicación: cargador de modelos, movimiento del modelo, de las luces y de la cámara. Cambio de modelo, materiales y texturas. Animaciones. Integración con el motor; ICED: Integración con el videojuego, sustitución de Irrlicht por el motor propio | 1d? | 2017-02-24 | 2017-02-27 |  |
| 158 | [TAG] Optimizaciones del motor (4 técnicas) | 1d? | 2017-02-24 | 2017-02-27 |  |
| 164 | [PM] Confeccionar Informes de iteración e informe resumen de Hito 3 | 1d? | 2017-02-28 | 2017-03-01 |  |
| 165 | [PM] Comparar la planificación prevista y real en Project hito 3. | 1d? | 2017-02-28 | 2017-03-01 |  |
| 166 | [PM] Elaborar la presentación del Hito 3 | 1d? | 2017-02-28 | 2017-03-01 |  |

Removed: 120 Comparar la planificación prevista y real en Project hito 3.; 121 Confeccionar Informes de iteración e informe resumen de Hito 3; 122 Elaborar la presentación del Hito 3; 123 Exponer la presentación del Hito 3; 125 Arbol de la escena: Tipos de datos para nodos (completo) y entidades (sólo clase padre; clases hijas sin contenido), construcción del árbol, recorrido del árbol, salida en modo texto; 126 Arbol de la escena: Tipos de datos para entidades de tipo transformacion (traslación, rotación y escalado relativos y absolutos. Otras transformaciones). Salida en modo texto; 131 Visualización: visualizador OpenGL 4.X de las entidades tipo malla. Shader básico. Integración con el motor. Sin materiales, texturas, cámara ni luces; 132 Visualización: visualizador OpenGL 4.X de las entidades tipo malla. Shader básico. Con cámaras y luces de varios tipos. Visualización con registro de cámaras y luces.; 133 Gestor de recursos: Carga de materiales y texturas. Salida en modo texto; 134 Visualización: visualizador OpenGL 4.X de las entidades tipo malla. Shader básico. Añadiendo materiales y texturas.; 135 Fachada: creación de una fachada entre el motor y la aplicación.; 136 Visualización: visualizador OpenGL 4.X con cuatro shaders avanzados; 137 IGC: Aplicación: cargador de modelos, movimiento del modelo, de las luces y de la cámara. Cambio de modelo, materiales y texturas. Animaciones. Integración con el motor; ICED: Integración con el videojuego, sustitución de Irrlicht por el motor propio; 138 Optimizaciones del motor (4 técnicas); 140 Sistema de Waypoints para pathfinding continuo; 142 Gestión de recursos de IA con Level-of-Detail (LoD); 145 Implementación de menús; 146 Implementación del HUD; 150 Trailer juego/proyecto

Changed:

| ID | Task | Start | Finish | Duration | Complete | Total float | Predecessors | Other |
| --- | --- | --- | --- | --- | --- | --- | --- | --- |
| 15 | **HITO 1** | 2016-10-14 A |  |  | 0% → 1% |  |  |  |
| 16 | **Iteración 1 (2 nov)** | 2016-10-14 A |  |  | 0% → 2% | 34.12d → 37.88d |  |  |
| 18 | [PM] Detallar plan iteraciones del mes de Noviembre. Creación Subtareas y precedencias en Project | 2016-10-14 A |  |  | 0% → 25% |  |  |  |
| 113 | [PM] Confeccionar Informes de iteración e informe resumen de Hito 2 |  |  |  |  |  |  | resources Catherine; Gaspar; Julia; Nerea [2%]; Sandra [2%]; Stoycho → Nerea [2%]; Sandra [2%] |
| 115 | **HITO 3** |  | 2016-10-14 → 2017-03-01 (+138d) | 1d? → 98.25d? |  | 80.25d → 0d |  |  |
| 116 | **Iteración 1** | 2016-10-14 → 2017-02-06 (+115d) | 2016-10-14 → 2017-02-20 (+129d) | 1d? → 10d? |  | 80.25d → 0d | none → 95 | was named PM |
| 117 | [PM] Detallar plan iteraciones del mes de Febrero-Marzo. Creación Subtareas y precedencias en Project | 2016-10-14 → 2017-02-06 (+115d) | 2016-10-14 → 2017-02-09 (+118d) | 1d? → 3.33d? |  | 70.88d → 6.67d |  | was named Detallar plan iteraciones del mes de Febrero-Marzo. Creación Subtareas y precedencias en Project; resources none → Sandra [30%] |
| 118 | [PM] Detallar plan iteraciones del mes de Febrero-Marzo Asignar recursos a las tareas en Project. | 2016-10-14 → 2017-02-06 (+115d) | 2016-10-14 → 2017-02-09 (+118d) | 1d? → 3.33d? |  | 70.88d → 6.67d |  | was named Detallar plan iteraciones del mes de Febrero-Marzo Asignar recursos a las tareas en Project.; resources none → Sandra [30%] |
| 119 | [PM] Registrar de tiempos y % de realización de tareas en Project | 2016-10-14 → 2017-02-06 (+115d) | 2016-10-14 → 2017-02-08 (+117d) | 1d? → 2.5d? |  | 70.88d → 7.5d |  | was named Registrar de tiempos y % de realización de tareas en Project; resources none → Sandra [40%] |
| 136 | **Iteración 2** | 2016-10-14 → 2017-02-20 (+129d) | 2016-10-14 → 2017-02-24 (+133d) | 1d? → 4d? |  | 80.25d → 0d | none → 116 | was named TAG |
| 139 | [TAG] Arbol de la escena: Tipos de datos para entidades de tipo cámara y luz (cámaras y luces de dos tipos). Salida en modo texto | 2016-10-14 → 2017-02-20 (+129d) | 2016-10-14 → 2017-02-24 (+133d) | 1d? → 4d? |  | 70.88d → 0d |  | was named Arbol de la escena: Tipos de datos para entidades de tipo cámara y luz (cámaras y luces de dos tipos). Salida en modo texto; resources none → Stoycho [25%] |
| 140 | [TAG] Arbol de la escena: Tipos de datos para entidades de tipo malla. Salida en modo texto | 2016-10-14 → 2017-02-20 (+129d) | 2016-10-14 → 2017-02-24 (+133d) | 1d? → 4d? |  | 70.88d → 0d |  | was named Arbol de la escena: Tipos de datos para entidades de tipo malla. Salida en modo texto; resources none → Stoycho [25%] |
| 141 | [TAG] Arbol de la escena: Tipos de datos para entidades de tipo animación (cuadro a cuadro). Salida en modo texto | 2016-10-14 → 2017-02-20 (+129d) | 2016-10-14 → 2017-02-24 (+133d) | 1d? → 4d? |  | 70.88d → 0d |  | was named Arbol de la escena: Tipos de datos para entidades de tipo animación (cuadro a cuadro). Salida en modo texto; resources none → Stoycho [25%] |
| 142 | [TAG] Gestor de recursos: Carga de modelos en formato múltiple en las entidades de tipo malla. Carga de varios ficheros para animación. Salida en modo texto | 2016-10-14 → 2017-02-20 (+129d) | 2016-10-14 → 2017-02-24 (+133d) | 1d? → 4d? |  | 70.88d → 0d |  | was named Gestor de recursos: Carga de modelos en formato múltiple en las entidades de tipo malla. Carga de varios ficheros para animación. Salida en modo texto; resources none → Stoycho [25%] |
| 143 | **Iteración 3** | 2016-10-14 → 2017-02-24 (+133d) | 2016-10-14 → 2017-02-27 (+136d) |  |  | 80.25d → 0d | none → 136 | was named V1 |
| 144 | [V1] Sistema de depuración visual in-game de la IA | 2016-10-14 → 2017-02-24 (+133d) | 2016-10-14 → 2017-02-27 (+136d) |  |  | 70.88d → 0d |  | was named Sistema de depuración visual in-game de la IA; resources none → Gaspar; Julia |
| 159 | **Iteración 4** | 2016-10-14 → 2017-02-27 (+136d) | 2016-10-14 → 2017-02-28 (+137d) |  |  | 80.25d → 0d | none → 143 | was named V2 |
| 160 | [V2] Diseño y creación de niveles | 2016-10-14 → 2017-02-27 (+136d) | 2016-10-14 → 2017-02-28 (+137d) |  |  | 70.88d → 0d |  | was named Diseño y creación de niveles; resources none → Catherine; Nerea |
| 161 | [V2] Implementación de clipping (comparativa de FPS con/sin oclusiones) | 2016-10-14 → 2017-02-27 (+136d) | 2016-10-14 → 2017-02-28 (+137d) |  |  | 70.88d → 0d |  | was named Implementación de clipping (comparativa de FPS con/sin oclusiones); resources none → Catherine; Nerea |
| 162 | [V2] Sistema de Level-Of-Detail (LoD) para la selección de la malla gráfica de los objetos | 2016-10-14 → 2017-02-27 (+136d) | 2016-10-14 → 2017-02-28 (+137d) |  |  | 70.88d → 0d |  | was named Sistema de Level-Of-Detail (LoD) para la selección de la malla gráfica de los objetos; resources none → Catherine; Nerea |
| 163 | **Iteración 5** | 2016-10-14 → 2017-02-28 (+137d) | 2016-10-14 → 2017-03-01 (+138d) |  |  | 80.25d → 0d | none → 159 | was named PD |
| 167 | [PD] Vídeo final juego | 2016-10-14 → 2017-02-28 (+137d) | 2016-10-14 → 2017-03-01 (+138d) |  |  | 70.88d → 0d |  | was named Vídeo final juego / explicación parte del proyecto; resources none → Julia; Sandra |

## Version 7 (saved 2017-02-14)

Note of the change: actualizado

Last finish 2017-03-01 → 2017-04-12 (+42d).

Changed:

| ID | Task | Start | Finish | Duration | Complete | Total float | Predecessors | Other |
| --- | --- | --- | --- | --- | --- | --- | --- | --- |
| 15 | **HITO 1** |  |  |  |  |  | none → 13 |  |
| 16 | **Iteración 1 (2 nov)** |  |  |  | 2% → 3% |  |  |  |
| 17 | [PM] Registrar de tiempos y % de realización de tareas en Project | 2016-10-14 → 2016-10-17 (+3d) | 2016-10-31 → 2016-10-18 (-13d) | 12d → 10h |  | 38.88d → 48.62d |  |  |
| 18 | [PM] Detallar plan iteraciones del mes de Noviembre. Creación Subtareas y precedencias en Project |  | 2016-10-18 → 2016-10-19 (+1d) | 23h → 25.25h | 25% → 23% | 34.12d → 37.72d |  |  |
| 19 | [PM] Detallar plan iteraciones del mes de Noviembre. Asignar recursos a las tareas en Project. | 2016-10-18 → 2016-10-19 (+1d) | 2016-10-21 → 2016-10-24 (+3d) |  |  | 34.12d → 37.72d |  |  |
| 20 | [PD] Hacer cartel del juego | 2016-10-14 → 2016-10-17 (+3d) | 2016-10-17 → 2016-10-18 (+1d) |  |  | 47d → 46d |  |  |
| 21 | [V1] Entregar documento de diseño de mecánicas de los NPCs | 2016-10-14 → 2016-10-17 (+3d) | 2016-10-18 → 2016-10-19 (+1d) |  |  | 45.75d → 44.75d |  |  |
| 22 | [V1] Entregar documento de diseño de sistemas de toma de decisión | 2016-10-14 → 2016-10-17 (+3d) | 2016-10-18 → 2016-10-19 (+1d) |  |  | 45.5d → 44.5d |  |  |
| 23 | **[V2] Diseñar e implementar la arquitectura basada en componentes (diagrama de clases e implementación)** | 2016-10-14 → 2016-10-17 (+3d) | 2016-10-14 → 2016-10-17 (+3d) |  |  | 47.25d → 46.25d |  |  |
| 24 | Instalación Irrlicht | 2016-10-14 → 2016-10-17 (+3d) | 2016-10-14 → 2016-10-17 (+3d) |  |  | 47.25d → 46.25d |  |  |
| 25 | Aprendizaje Xcode | 2016-10-14 → 2016-10-17 (+3d) | 2016-10-14 → 2016-10-17 (+3d) |  |  | 47.25d → 46.25d |  |  |
| 26 | Instalación Box2D | 2016-10-14 → 2016-10-17 (+3d) | 2016-10-14 → 2016-10-17 (+3d) |  |  | 47.25d → 46.25d |  |  |
| 27 | Diseño inicial del diagrama de componentes | 2016-10-14 → 2016-10-17 (+3d) | 2016-10-14 → 2016-10-17 (+3d) |  |  | 47.25d → 46.25d |  |  |
| 28 | Compilación multiplataforma | 2016-10-14 → 2016-10-17 (+3d) | 2016-10-14 → 2016-10-17 (+3d) |  |  | 47.25d → 46.25d |  |  |
| 29 | [PM] Comparar la planificación prevista y real en Project hito 1. | 2016-10-21 → 2016-10-24 (+3d) |  |  |  | 42.5d → 42.22d |  |  |
| 30 | [PM] Confeccionar Informes de iteración e informe resumen de Hito 1 | 2016-10-14 → 2016-10-17 (+3d) | 2016-10-14 → 2016-10-17 (+3d) |  |  | 49.88d → 48.88d |  |  |
| 33 | [PM] Registrar de tiempos y % de realización de tareas en Project |  | 2016-11-16 → 2016-11-03 (-13d) | 11d → 10h |  | 26.88d → 36.62d |  |  |
| 95 | **HITO 2** |  |  | 30.38d → 30.63d |  |  |  |  |
| 96 | **Iteración 1 (31 dic)** |  |  | 2.62d → 2.88d |  |  |  |  |
| 97 | [PM] Detallar plan iteraciones del mes de Enero. Creación Subtareas y precedencias en Project |  | 2016-12-26 → 2016-12-28 (+2d) | 3h → 23.04h |  | 2.25d → 0d |  |  |
| 98 | [PM] Detallar plan iteraciones del mes de Enero. Asignar recursos a las tareas en Project. |  | 2016-12-26 → 2016-12-28 (+2d) | 3h → 23.04h |  | 2.25d → 0d |  |  |
| 105 | [PD] Creación de los menús / HUD |  | 2016-12-30 → 2017-01-02 (+3d) |  |  |  |  |  |
| 106 | [V2] Integración de librería para GUI |  | 2016-12-30 → 2017-01-02 (+3d) |  |  |  |  |  |
| 111 | [PM] Confeccionar Informes de iteración e informe resumen de Hito 2 |  | 2017-01-16 → 2017-01-17 (+1d) | 5h → 9.6h |  | 15d → 14.43d |  |  |
| 113 | **HITO 3** | 2016-10-14 → 2017-02-06 (+115d) | 2017-03-01 → 2017-04-12 (+42d) | 98.25d? → 46.88d? |  |  |  |  |
| 114 | **Iteración 1** |  | 2017-02-20 → 2017-02-15 (-5d) | 10d? → 6.88d? |  |  |  |  |
| 115 | [PM] Detallar plan iteraciones del mes de Febrero-Marzo. Creación Subtareas y precedencias en Project |  |  | 3.33d? → 23h |  | 6.67d → 4d |  |  |
| 116 | [PM] Detallar plan iteraciones del mes de Febrero-Marzo Asignar recursos a las tareas en Project. |  |  | 3.33d? → 23.04h |  | 6.67d → 4d |  |  |
| 117 | [PM] Registrar de tiempos y % de realización de tareas en Project |  | 2017-02-08 → 2017-02-09 (+1d) |  |  | 7.5d → 4.38d |  |  |
| 118 | [V1] Sistema de búsqueda de caminos y control |  | 2017-02-09 → 2017-02-14 (+5d) | 3.33d? → 50h |  | 6.67d → 0.62d |  |  |
| 119 | [V1] Sistema de percepción sensorial |  | 2017-02-09 → 2017-02-10 (+1d) | 3.33d? → 28h |  | 6.67d → 3.38d |  |  |
| 120 | [V2] Gestión de colisiones de la cámara |  | 2017-02-13 → 2017-02-08 (-5d) | 5d? → 15h |  |  |  |  |
| 121 | [V2] Mecánicas básicas entidades sin IA |  | 2017-02-14 → 2017-02-09 (-5d) | 6.67d? → 25h |  | 3.33d → 3.75d |  |  |
| 122 | [V2] Implementación del HUD |  |  | 3.33d? → 25h |  | 6.67d → 3.75d |  |  |
| 123 | [V2] Implementación de menús |  | 2017-02-20 → 2017-02-10 (-10d) | 10d? → 35h |  | 0d → 2.5d |  |  |
| 124 | [V2] Mecánicas de puzzle |  | 2017-02-14 → 2017-02-09 (-5d) | 6.67d? → 22h |  | 3.33d → 4.12d |  |  |
| 125 | [V1] Sistema de gestión de eventos |  | 2017-02-13 → 2017-02-15 (+2d) | 5d? → 55h |  | 5d → 0d |  |  |
| 126 | **[V1] Sistema de Waypoints para pathfinding continuo** |  |  | 1d? → 1.25d |  | 9d → 5.62d |  |  |
| 127 | Pathfinding basico |  |  | 1d? → 10h |  | 9d → 5.62d |  |  |
| 128 | Pathfinding con algoritmo especifico |  |  | 1d? → 10h |  | 9d → 5.62d |  |  |
| 129 | Pruebas en casos diversos |  |  | 1d? → 10h |  | 9d → 5.62d |  |  |
| 130 | Integración en el juego |  |  | 1d? → 10h |  | 9d → 5.62d |  |  |
| 131 | Pruebas de funcionamiento |  |  | 1d? → 10h |  | 9d → 5.62d |  |  |
| 132 | [TAG] Arbol de la escena: Tipos de datos para entidades de tipo transformacion (traslación, rotación y escalado relativos y absolutos. Otras transformaciones). Salida en modo texto | 2016-10-14 → 2017-02-06 (+115d) | 2016-10-14 → 2017-02-09 (+118d) | 0d? → 25h |  | 98.25d → 3.75d | none → 95 |  |
| 133 | [TAG] Arbol de la escena: Tipos de datos para nodos (completo) y entidades (sólo clase padre; clases hijas sin contenido), construcción del árbol, recorrido del árbol, salida en modo texto | 2016-10-14 → 2017-02-06 (+115d) | 2016-10-14 → 2017-02-07 (+116d) | 0d? → 10h |  | 98.25d → 5.62d |  |  |
| 134 | **Iteración 2** | 2017-02-20 → 2017-02-15 (-5d) | 2017-02-24 → 2017-03-09 (+13d) | 4d? → 15.62d |  |  |  |  |
| 135 | **[PD] Trailer juego** | 2017-02-20 → 2017-02-15 (-5d) | 2017-02-21 → 2017-03-09 (+16d) | 1d? → 125h |  | 3d → none |  |  |
| 136 | Ideas y bocetos | 2017-02-20 → 2017-02-15 (-5d) | 2017-02-21 → 2017-02-16 (-5d) |  |  | 3d → 14.62d |  |  |
| 137 | [TAG] Arbol de la escena: Tipos de datos para entidades de tipo cámara y luz (cámaras y luces de dos tipos). Salida en modo texto | 2017-02-20 → 2017-02-15 (-5d) | 2017-02-24 → 2017-02-17 (-7d) | 4d? → 15h |  | 0d → 13.75d |  |  |
| 138 | [TAG] Arbol de la escena: Tipos de datos para entidades de tipo malla. Salida en modo texto | 2017-02-20 → 2017-02-15 (-5d) | 2017-02-24 → 2017-02-16 (-8d) | 4d? → 8h |  | 0d → 14.62d |  |  |
| 139 | [TAG] Arbol de la escena: Tipos de datos para entidades de tipo animación (cuadro a cuadro). Salida en modo texto | 2017-02-20 → 2017-02-15 (-5d) | 2017-02-24 → 2017-02-17 (-7d) | 4d? → 15h |  | 0d → 13.75d |  |  |
| 140 | [TAG] Gestor de recursos: Carga de modelos en formato múltiple en las entidades de tipo malla. Carga de varios ficheros para animación. Salida en modo texto | 2017-02-20 → 2017-02-15 (-5d) | 2017-02-24 → 2017-02-17 (-7d) | 4d? → 20h |  | 0d → 13.12d |  |  |
| 141 | **Iteración 3** | 2017-02-24 → 2017-03-09 (+13d) | 2017-02-27 → 2017-03-20 (+21d) | 1d? → 7.5d? |  |  |  |  |
| 142 | [V1] Sistema de memoria de estado y reacción para NPCs | 2017-01-13 → 2017-03-09 (+55d) | 2017-01-19 → 2017-03-10 (+50d) | 34h → 1d? |  | 11.38d → 6.5d |  | resources Julia [50%]; Gaspar [50%] → none |
| 143 | [V1] Sistema de depuración visual in-game de la IA | 2017-02-24 → 2017-03-09 (+13d) | 2017-02-27 → 2017-03-17 (+18d) | 1d? → 50h |  | 0d → 1.25d |  |  |
| 144 | [RV] Texturizar personajes | 2017-02-24 → 2017-03-09 (+13d) | 2017-02-27 → 2017-03-10 (+11d) |  |  | 0d → 6.5d |  |  |
| 145 | [RV] Rigging de los personajes | 2017-02-24 → 2017-03-09 (+13d) | 2017-02-27 → 2017-03-10 (+11d) |  |  | 0d → 6.5d |  |  |
| 146 | [RV] Modelado del entorno y elementos | 2017-02-24 → 2017-03-09 (+13d) | 2017-02-27 → 2017-03-10 (+11d) |  |  | 0d → 6.5d |  |  |
| 147 | [RV] Texturizado del entorno y elementos | 2017-02-24 → 2017-03-09 (+13d) | 2017-02-27 → 2017-03-10 (+11d) |  |  | 0d → 6.5d |  |  |
| 148 | [RV] Captura de movimiento | 2017-02-24 → 2017-03-09 (+13d) | 2017-02-27 → 2017-03-10 (+11d) |  |  | 0d → 6.5d |  |  |
| 149 | [RV] Modelado de los personajes | 2017-02-24 → 2017-03-09 (+13d) | 2017-02-27 → 2017-03-10 (+11d) |  |  | 0d → 6.5d |  |  |
| 150 | [TAG] Visualización: visualizador OpenGL 4.X de las entidades tipo malla. Shader básico. Integración con el motor. Sin materiales, texturas, cámara ni luces | 2017-02-24 → 2017-03-09 (+13d) | 2017-02-27 → 2017-03-10 (+11d) | 1d? → 10h |  | 0d → 6.25d |  |  |
| 151 | [TAG] Visualización: visualizador OpenGL 4.X de las entidades tipo malla. Shader básico. Con cámaras y luces de varios tipos. Visualización con registro de cámaras y luces. | 2017-02-24 → 2017-03-09 (+13d) | 2017-02-27 → 2017-03-13 (+14d) | 1d? → 20h |  | 0d → 5d |  |  |
| 152 | [TAG] Gestor de recursos: Carga de materiales y texturas. Salida en modo texto | 2017-02-24 → 2017-03-09 (+13d) | 2017-02-27 → 2017-03-13 (+14d) | 1d? → 20h |  | 0d → 5d |  |  |
| 153 | [TAG] Visualización: visualizador OpenGL 4.X de las entidades tipo malla. Shader básico. Añadiendo materiales y texturas. | 2017-02-24 → 2017-03-09 (+13d) | 2017-02-27 → 2017-03-13 (+14d) | 1d? → 20h |  | 0d → 5d |  |  |
| 154 | [TAG] Fachada: creación de una fachada entre el motor y la aplicación. | 2017-02-24 → 2017-03-09 (+13d) | 2017-02-27 → 2017-03-14 (+15d) | 1d? → 25h |  | 0d → 4.38d |  |  |
| 155 | [TAG] Visualización: visualizador OpenGL 4.X con cuatro shaders avanzados | 2017-02-24 → 2017-03-09 (+13d) | 2017-02-27 → 2017-03-16 (+17d) | 1d? → 45h |  | 0d → 1.88d |  |  |
| 156 | [TAG] Aplicación: cargador de modelos, movimiento del modelo, de las luces y de la cámara. Cambio de modelo, materiales y texturas. Animaciones. Integración con el motor; ICED: Integración con el videojuego, sustitución de Irrlicht por el motor propio | 2017-02-24 → 2017-03-09 (+13d) | 2017-02-27 → 2017-03-20 (+21d) | 1d? → 60h |  |  |  |  |
| 157 | [TAG] Optimizaciones del motor (4 técnicas) | 2017-02-24 → 2017-03-09 (+13d) | 2017-02-27 → 2017-03-16 (+17d) | 1d? → 45h |  | 0d → 1.88d |  |  |
| 158 | **Iteración 4** | 2017-02-27 → 2017-03-20 (+21d) | 2017-02-28 → 2017-03-30 (+30d) | 1d? → 7.5d |  |  |  |  |

| ID | Task | Start | Finish | Duration | Total float | Other |
| --- | --- | --- | --- | --- | --- | --- |
| 159 | [V2] Diseño y creación de niveles | 2017-02-27 → 2017-03-20 (+21d) | 2017-02-28 → 2017-03-30 (+30d) | 1d? → 60h |  |  |
| 160 | [V2] Implementación de clipping (comparativa de FPS con/sin oclusiones) | 2017-02-27 → 2017-03-20 (+21d) | 2017-02-28 → 2017-03-23 (+23d) | 1d? → 20h | 0d → 5d |  |
| 161 | [V2] Sistema de Level-Of-Detail (LoD) para la selección de la malla gráfica de los objetos | 2017-02-27 → 2017-03-20 (+21d) | 2017-02-28 → 2017-03-22 (+22d) | 1d? → 15h | 0d → 5.62d |  |
| 162 | **Iteración 5** | 2017-02-28 → 2017-03-30 (+30d) | 2017-03-01 → 2017-04-12 (+42d) | 1d? → 9.38d? |  |  |
| 163 | [PM] Confeccionar Informes de iteración e informe resumen de Hito 3 | 2017-02-28 → 2017-03-30 (+30d) | 2017-03-01 → 2017-04-03 (+33d) | 1d? → 21h | 0d → 6.75d |  |
| 164 | [PM] Comparar la planificación prevista y real en Project hito 3. | 2017-02-28 → 2017-03-30 (+30d) | 2017-03-01 → 2017-04-03 (+33d) | 1d? → 21h | 0d → 6.75d |  |
| 165 | [PM] Elaborar la presentación del Hito 3 | 2017-02-28 → 2017-03-30 (+30d) | 2017-03-01 → 2017-04-10 (+40d) | 1d? → 7.2d | 0d → 2.17d |  |
| 166 | [NM]Incorporación de open data, API's, y otras fuentes heterogéneas | 2017-01-13 → 2017-03-30 (+76d) | 2017-01-23 → 2017-03-31 (+67d) | 50h → 1d? | 9.38d → 8.38d | resources Julia [10%]; Nerea [10%] → none |
| 167 | [PD] Vídeo final juego | 2017-02-28 → 2017-03-30 (+30d) | 2017-03-01 → 2017-04-12 (+42d) | 1d? → 75h |  |  |
